Schedule from MS Project, 2009-06-02 to 2009-06-17.

## Calendars

- Estándar: Mon-Fri 09:00-13:00, 15:00-19:00; Sat-Sun off.

## Schedule

| ID | WBS | Task | Type | Duration | Start | Finish | Predecessors | Total slack | Free slack |
| --- | --- | --- | --- | --- | --- | --- | --- | --- | --- |
| 1 | 1 | **Vestuario** |  | 11.38d | 2009-06-02 09:00 | 2009-06-17 12:00 |  | 0d |  |
| 2 | 1.1 | **Vestuario del novio** |  | 8.25d | 2009-06-02 09:00 | 2009-06-12 11:00 |  | 3.12d |  |
| 3 | 1.1.1 | Concertar cita previa |  | 1h | 2009-06-02 09:00 | 2009-06-02 10:00 |  | 3.12d | 0d |
| 4 | 1.1.2 | Selección de posibilidades |  | 3h | 2009-06-02 10:00 | 2009-06-02 13:00 | 3 | 3.12d | 0d |
| 5 | 1.1.3 | Elección traje definitivo |  | 3h | 2009-06-02 15:00 | 2009-06-02 18:00 | 4 | 3.12d | 0d |
| 6 | 1.1.4 | Selección de complementos |  | 1h | 2009-06-02 18:00 | 2009-06-02 19:00 | 5 | 3.12d | 0d |
| 7 | 1.1.5 | Elección definitiva de complementos |  | 1h | 2009-06-03 09:00 | 2009-06-03 10:00 | 6 | 3.12d | 0d |
| 8 | 1.1.6 | Firma de contrato modista | milestone | 0d | 2009-06-03 10:00 | 2009-06-03 10:00 | 7 | 3.12d | 0d |
| 9 | 1.1.7 | Realización de arreglos |  | 7d | 2009-06-03 10:00 | 2009-06-12 10:00 | 8 | 3.12d | 0d |
| 10 | 1.1.8 | Prueba de arreglos |  | 1h | 2009-06-12 10:00 | 2009-06-12 11:00 | 9 | 3.12d | 0d |
| 11 | 1.1.9 | Entrega del traje | milestone | 0d | 2009-06-12 11:00 | 2009-06-12 11:00 | 10 | 3.12d |  |
| 12 | 1.2 | **Vestuario de la novia** |  | 11.38d | 2009-06-02 09:00 | 2009-06-17 12:00 |  | 0d |  |
| 13 | 1.2.1 | Concertar cita previa |  | 1h | 2009-06-02 09:00 | 2009-06-02 10:00 |  | 0d |  |
| 14 | 1.2.2 | Selección de posibilidades |  | 4h | 2009-06-02 10:00 | 2009-06-02 16:00 | 13 | 0d |  |
| 15 | 1.2.3 | Elección traje definitivo |  | 3h | 2009-06-02 16:00 | 2009-06-02 19:00 | 14 | 0d |  |
| 16 | 1.2.4 | Selección de complementos |  | 1h | 2009-06-03 09:00 | 2009-06-03 10:00 | 15 | 0d |  |
| 17 | 1.2.5 | Elección definitiva de complementos |  | 1h | 2009-06-03 10:00 | 2009-06-03 11:00 | 16 | 0d |  |
| 18 | 1.2.6 | Firma de contrato modista | milestone | 0d | 2009-06-03 11:00 | 2009-06-03 11:00 | 17 | 0d |  |
| 19 | 1.2.7 | Realización de arreglos |  | 10d | 2009-06-03 11:00 | 2009-06-17 11:00 | 18 | 0d |  |
| 20 | 1.2.8 | Prueba de arregos |  | 1h | 2009-06-17 11:00 | 2009-06-17 12:00 | 19 | 0d |  |
| 21 | 1.2.9 | Entrega del traje | milestone | 0d | 2009-06-17 12:00 | 2009-06-17 12:00 | 20 | 0d |  |
| 22 | 1.3 | Pago de vestuario | milestone | 0d | 2009-06-17 12:00 | 2009-06-17 12:00 | 11, 21 | 0.25d | 0d |
| 23 | 1.4 | Cierre contrato vestuario | milestone | 0d | 2009-06-17 12:00 | 2009-06-17 12:00 | 22 | 0.25d |  |
| 24 | 2 | **Anillos** |  | 7.62d | 2009-06-02 09:00 | 2009-06-11 16:00 |  | 4d |  |
| 25 | 2.1 | Concertar cita previa |  | 1h | 2009-06-02 09:00 | 2009-06-02 10:00 |  | 4d | 0d |
| 26 | 2.2 | Selección de posiblidades |  | 2h | 2009-06-02 10:00 | 2009-06-02 12:00 | 25 | 4d | 0d |
| 27 | 2.3 | Elección modelo definitivo |  | 1h | 2009-06-02 12:00 | 2009-06-02 13:00 | 26 | 4d | 0d |
| 28 | 2.4 | Firma de contrato joyería | milestone | 0d | 2009-06-02 13:00 | 2009-06-02 13:00 | 27 | 4d | 0d |
| 29 | 2.5 | Arreglos y grabados |  | 7d | 2009-06-02 15:00 | 2009-06-11 13:00 | 28 | 4d | 0d |
| 30 | 2.6 | Prueba de arregos |  | 1h | 2009-06-11 15:00 | 2009-06-11 16:00 | 29 | 4d | 0d |
| 31 | 2.7 | Entrega de alianzas | milestone | 0d | 2009-06-11 16:00 | 2009-06-11 16:00 | 30 | 4d | 0d |
| 32 | 2.8 | Pago de alianzas | milestone | 0d | 2009-06-11 16:00 | 2009-06-11 16:00 | 31 | 4d | 0d |
| 33 | 2.9 | Cierre contrato alianzas | milestone | 0d | 2009-06-11 16:00 | 2009-06-11 16:00 | 32 | 4d |  |

| ID | WBS | Task | Type | Duration | Start | Finish | Predecessors | Total slack | Free slack |
| --- | --- | --- | --- | --- | --- | --- | --- | --- | --- |
| 34 | 3 | **Peinado** |  | 1.38d | 2009-06-02 09:00 | 2009-06-03 12:00 |  | 10.25d |  |
| 35 | 3.1 | Concertar cita previa |  | 1h | 2009-06-02 09:00 | 2009-06-02 10:00 |  | 10.25d | 0d |
| 36 | 3.2 | Selección de posiblidades |  | 1h | 2009-06-02 10:00 | 2009-06-02 11:00 | 35 | 10.25d | 0d |
| 37 | 3.3 | Prueba de posiblidades |  | 4h | 2009-06-02 11:00 | 2009-06-02 17:00 | 36 | 10.25d | 0d |
| 38 | 3.4 | Selección de peinado definitivo |  | 1h | 2009-06-02 17:00 | 2009-06-02 18:00 | 37 | 10.25d | 0d |
| 39 | 3.5 | Firma de contrato peinado | milestone | 0d | 2009-06-02 18:00 | 2009-06-02 18:00 | 38 | 10.25d | 0d |
| 40 | 3.6 | Servicio peluquería fotos estudio |  | 2h | 2009-06-02 18:00 | 2009-06-03 10:00 | 39 | 10.25d | 0d |
| 41 | 3.7 | Servicio de peluquería |  | 2h | 2009-06-03 10:00 | 2009-06-03 12:00 | 40 | 10.25d | 0d |
| 42 | 3.8 | Pago de peluquería | milestone | 0d | 2009-06-03 12:00 | 2009-06-03 12:00 | 41 | 10.25d | 0d |
| 43 | 3.9 | Cierre contrato peluquería | milestone | 0d | 2009-06-03 12:00 | 2009-06-03 12:00 | 42 | 10.25d |  |
| 44 | 4 | **Fotografía** |  | 11.62d | 2009-06-02 09:00 | 2009-06-17 16:00 |  | 0d |  |
| 45 | 4.1 | Concertar cita previa |  | 1h | 2009-06-02 09:00 | 2009-06-02 10:00 |  | 11.12d | 0d |
| 46 | 4.2 | Selección de album |  | 1h | 2009-06-02 10:00 | 2009-06-02 11:00 | 45 | 11.12d | 0d |
| 47 | 4.3 | Firma contrato fotógrafo | milestone | 0d | 2009-06-02 11:00 | 2009-06-02 11:00 | 46 | 11.12d |  |
| 48 | 4.4 | Realización fotos estudio |  | 2h | 2009-06-17 12:00 | 2009-06-17 16:00 | 47, 21, 11, 40 | 0d |  |
| 49 | 4.5 | Realización reportaje fotográfico |  | 4h | 2009-06-02 09:00 | 2009-06-02 13:00 |  | 11.12d |  |
| 50 | 4.6 | Pago servicio fotográfico | milestone | 0d | 2009-06-17 16:00 | 2009-06-17 16:00 | 48, 49 | 0d |  |
| 51 | 4.7 | Entrega reportaje fotográfico | milestone | 0d | 2009-06-17 16:00 | 2009-06-17 16:00 | 50 | 0d |  |
| 52 | 4.8 | Cierre contrato fotógrafo | milestone | 0d | 2009-06-17 16:00 | 2009-06-17 16:00 | 51 | 0d |  |
| 53 | 5 | **Flores y decoración** |  | 1d | 2009-06-02 09:00 | 2009-06-02 19:00 |  | 10.62d |  |
| 54 | 5.1 | Concertar cita previa |  | 1h | 2009-06-02 09:00 | 2009-06-02 10:00 |  | 10.62d | 0d |
| 55 | 5.2 | Selección del tipo de decoración |  | 2h | 2009-06-02 10:00 | 2009-06-02 12:00 | 54 | 10.62d | 0d |
| 56 | 5.3 | Selección tipo plantas |  | 1h | 2009-06-02 12:00 | 2009-06-02 13:00 | 55 | 10.62d | 0d |
| 57 | 5.4 | Selección ramo novia |  | 1h | 2009-06-02 15:00 | 2009-06-02 16:00 | 56 | 10.62d | 0d |
| 58 | 5.5 | Firma contrato floristería | milestone | 0d | 2009-06-02 16:00 | 2009-06-02 16:00 | 57 | 10.62d | 0d |
| 59 | 5.6 | Instalación decoración iglesia |  | 3h | 2009-06-02 16:00 | 2009-06-02 19:00 | 58, 119 | 10.62d | 0d |
| 60 | 5.7 | Entrega ramo novia | milestone | 0d | 2009-06-02 19:00 | 2009-06-02 19:00 | 59 | 10.62d | 0d |
| 61 | 5.8 | Pago servicio floristería | milestone | 0d | 2009-06-02 19:00 | 2009-06-02 19:00 | 60 | 10.62d | 0d |
| 62 | 5.9 | Cierre contrato floristería | milestone | 0d | 2009-06-02 19:00 | 2009-06-02 19:00 | 61 | 10.62d |  |

| ID | WBS | Task | Type | Duration | Start | Finish | Predecessors | Total slack | Free slack |
| --- | --- | --- | --- | --- | --- | --- | --- | --- | --- |
| 63 | 6 | **Papelería y regalos** |  | 11.5d | 2009-06-02 09:00 | 2009-06-17 13:00 |  | 0.12d |  |
| 64 | 6.1 | **Invitaciones** |  | 11.5d | 2009-06-02 09:00 | 2009-06-17 13:00 |  | 0.12d |  |
| 65 | 6.1.1 | Elaboración lista invitados |  | 2d | 2009-06-02 09:00 | 2009-06-03 19:00 |  | 0.12d | 0d |
| 66 | 6.1.2 | Elaboración lista bodas |  | 2d | 2009-06-04 09:00 | 2009-06-05 19:00 | 65 | 0.12d | 0d |
| 67 | 6.1.3 | Concertar cita previa |  | 1h | 2009-06-08 09:00 | 2009-06-08 10:00 | 66 | 0.12d | 0d |
| 68 | 6.1.4 | Selección tipo invitación |  | 2h | 2009-06-08 10:00 | 2009-06-08 12:00 | 67 | 0.12d | 0d |
| 69 | 6.1.5 | Selección texto invitación |  | 1h | 2009-06-08 12:00 | 2009-06-08 13:00 | 68 | 0.12d | 0d |
| 70 | 6.1.6 | Firma contrato papelería | milestone | 0d | 2009-06-08 13:00 | 2009-06-08 13:00 | 69 | 0.12d | 0d |
| 71 | 6.1.7 | Envío invitaciones |  | 7d | 2009-06-08 15:00 | 2009-06-17 13:00 | 70 | 0.12d | 0d |
| 72 | 6.2 | **Regalo madrina** |  | 7.25d | 2009-06-02 09:00 | 2009-06-11 11:00 |  | 4.38d |  |
| 73 | 6.2.1 | Concertar cita previa |  | 1h | 2009-06-02 09:00 | 2009-06-02 10:00 |  | 4.38d | 0d |
| 74 | 6.2.2 | Selección regalo |  | 1h | 2009-06-02 10:00 | 2009-06-02 11:00 | 73 | 4.38d | 0d |
| 75 | 6.2.3 | Firma contrato regalos madrina | milestone | 0d | 2009-06-02 11:00 | 2009-06-02 11:00 | 74 | 4.38d | 0d |
| 76 | 6.2.4 | Entrega regalos madrina |  | 7d | 2009-06-02 11:00 | 2009-06-11 11:00 | 75 | 4.38d | 4.25d |
| 77 | 6.3 | **Regalo padrino** |  | 7.25d | 2009-06-02 09:00 | 2009-06-11 11:00 |  | 4.38d |  |
| 78 | 6.3.1 | Concertar cita previa |  | 1h | 2009-06-02 09:00 | 2009-06-02 10:00 |  | 4.38d | 0d |
| 79 | 6.3.2 | Selección regalo |  | 1h | 2009-06-02 10:00 | 2009-06-02 11:00 | 78 | 4.38d | 0d |
| 80 | 6.3.3 | Firma contrato regalo padrino | milestone | 0d | 2009-06-02 11:00 | 2009-06-02 11:00 | 79 | 4.38d | 0d |
| 81 | 6.3.4 | Entrega regalos padrino |  | 7d | 2009-06-02 11:00 | 2009-06-11 11:00 | 80 | 4.38d | 4.25d |
| 82 | 6.4 | Pago y Cierre contrato papelería y regalos | milestone | 0d | 2009-06-17 13:00 | 2009-06-17 13:00 | 71, 76, 81 | 0.12d |  |
| 83 | 7 | **Orquesta y música** |  | 2.62d | 2009-06-02 09:00 | 2009-06-04 16:00 |  | 9d |  |
| 84 | 7.1 | **Música ceremonia** |  | 1.25d | 2009-06-02 09:00 | 2009-06-03 11:00 |  | 10.38d |  |
| 85 | 7.1.1 | Concertar cita previa |  | 1h | 2009-06-02 09:00 | 2009-06-02 10:00 |  | 10.38d | 0d |
| 86 | 7.1.2 | Selección repertorio |  | 1d | 2009-06-02 10:00 | 2009-06-03 10:00 | 85 | 10.38d | 0d |
| 87 | 7.1.3 | Firma contrato música ceremonia | milestone | 0d | 2009-06-03 10:00 | 2009-06-03 10:00 | 86 | 10.38d | 0d |
| 88 | 7.1.4 | Actuación día boda |  | 1h | 2009-06-03 10:00 | 2009-06-03 11:00 | 87 | 10.38d | 0d |
| 89 | 7.1.5 | Pago y Cierre contrato grupo | milestone | 0d | 2009-06-03 11:00 | 2009-06-03 11:00 | 88 | 10.38d |  |

| ID | WBS | Task | Type | Duration | Start | Finish | Predecessors | Total slack | Free slack |
| --- | --- | --- | --- | --- | --- | --- | --- | --- | --- |
| 90 | 7.2 | **Música banquete** |  | 2.62d | 2009-06-02 09:00 | 2009-06-04 16:00 |  | 9d |  |
| 91 | 7.2.1 | Concertar cita previa |  | 1h | 2009-06-02 09:00 | 2009-06-02 10:00 |  | 9d | 0d |
| 92 | 7.2.2 | Selección tipo música |  | 2d | 2009-06-02 10:00 | 2009-06-04 10:00 | 91 | 9d | 0d |
| 93 | 7.2.3 | Firma contrato música banquete | milestone | 0d | 2009-06-04 10:00 | 2009-06-04 10:00 | 92 | 9d | 0d |
| 94 | 7.2.4 | Actuación día boda |  | 4h | 2009-06-04 10:00 | 2009-06-04 16:00 | 93 | 9d | 0d |
| 95 | 7.2.5 | Pago y Cierre contrato música | milestone | 0d | 2009-06-04 16:00 | 2009-06-04 16:00 | 94 | 9d |  |
| 96 | 8 | **Transporte** |  | 0.75d | 2009-06-02 09:00 | 2009-06-02 17:00 |  | 10.88d |  |
| 97 | 8.1 | **Transporte novios** |  | 0.25d | 2009-06-02 09:00 | 2009-06-02 11:00 |  | 11.38d |  |
| 98 | 8.1.1 | Concertar cita previa |  | 1h | 2009-06-02 09:00 | 2009-06-02 10:00 |  | 11.5d |  |
| 99 | 8.1.2 | Selección del tipo de transporte |  | 2h | 2009-06-02 09:00 | 2009-06-02 11:00 |  | 11.38d |  |
| 100 | 8.1.3 | Firma contrato | milestone | 0d | 2009-06-02 09:00 | 2009-06-02 09:00 |  | 11.62d |  |
| 101 | 8.1.4 | Desplazamiento de los novios iglesia |  | 1h | 2009-06-02 09:00 | 2009-06-02 10:00 |  | 11.5d |  |
| 102 | 8.1.5 | Desplazamiento novios hotel noche bodas |  | 2h | 2009-06-02 09:00 | 2009-06-02 11:00 |  | 11.38d |  |
| 103 | 8.1.6 | Cierre del contrato | milestone | 0d | 2009-06-02 09:00 | 2009-06-02 09:00 |  | 11.62d |  |
| 104 | 8.2 | **Transporte invitados** |  | 0.75d | 2009-06-02 09:00 | 2009-06-02 17:00 |  | 10.88d |  |
| 105 | 8.2.1 | Concertar cita previa |  | 1h | 2009-06-02 09:00 | 2009-06-02 10:00 |  | 11.5d |  |
| 106 | 8.2.2 | Selección del tipo de vehículo |  | 1h | 2009-06-02 09:00 | 2009-06-02 10:00 |  | 11.5d |  |
| 107 | 8.2.3 | Determinación servicios a prestar |  | 1h | 2009-06-02 09:00 | 2009-06-02 10:00 |  | 11.5d |  |
| 108 | 8.2.4 | Firma del contrato | milestone | 0d | 2009-06-02 09:00 | 2009-06-02 09:00 |  | 11.62d |  |
| 109 | 8.2.5 | Servicio de transporte |  | 6h | 2009-06-02 09:00 | 2009-06-02 17:00 |  | 10.88d |  |
| 110 | 8.2.6 | Cierre de contrato | milestone | 0d | 2009-06-02 09:00 | 2009-06-02 09:00 |  | 11.62d |  |
| 111 | 9 | **Trámites administrativos** |  | 10.12d | 2009-06-02 09:00 | 2009-06-16 10:00 |  | 1.5d |  |
| 112 | 9.1 | **Iglesia** |  | 10.12d | 2009-06-02 09:00 | 2009-06-16 10:00 |  | 1.5d |  |
| 113 | 9.1.1 | Concertar cita previa párroco |  | 1h | 2009-06-02 09:00 | 2009-06-02 10:00 |  | 1.5d | 0d |
| 114 | 9.1.2 | Reserva fecha boda |  | 1h | 2009-06-02 10:00 | 2009-06-02 11:00 | 113 | 6.12d | 0d |
| 115 | 9.1.3 | Selección fechas cursos prematrimoniales |  | 1h | 2009-06-02 11:00 | 2009-06-02 12:00 | 114 | 6.12d | 0d |
| 116 | 9.1.4 | Obtención certificados bautismo |  | 10d | 2009-06-02 10:00 | 2009-06-16 10:00 | 113 | 1.5d |  |
| 117 | 9.1.5 | Realización cursos prematrimoniales |  | 5d | 2009-06-02 12:00 | 2009-06-09 12:00 | 115 | 6.12d | 0d |
| 118 | 9.1.6 | Entrega certificados |  | 1h | 2009-06-09 12:00 | 2009-06-09 13:00 | 117 | 6.12d |  |
| 119 | 9.1.7 | Limpieza iglesia |  | 2h | 2009-06-02 11:00 | 2009-06-02 13:00 | 114 | 10.62d | 0d |
| 120 | 9.1.8 | Celebración ceremonia |  | 2h | 2009-06-02 15:00 | 2009-06-02 17:00 | 119 | 10.62d | 0d |
| 121 | 9.1.9 | Recogida y limpieza iglesia |  | 2h | 2009-06-02 17:00 | 2009-06-02 19:00 | 120 | 10.62d | 0d |
| 122 | 9.1.10 | Iglesia recogida | milestone | 0d | 2009-06-02 19:00 | 2009-06-02 19:00 | 121 | 10.62d |  |

| ID | WBS | Task | Type | Duration | Start | Finish | Predecessors | Total slack | Free slack |
| --- | --- | --- | --- | --- | --- | --- | --- | --- | --- |
| 123 | 9.2 | **Recinto banquete** |  | 4.62d | 2009-06-02 09:00 | 2009-06-08 16:00 |  | 7d |  |
| 124 | 9.2.1 | Cita previa ayuntamiento |  | 1h | 2009-06-02 09:00 | 2009-06-02 10:00 |  | 7d | 0d |
| 125 | 9.2.2 | Obtención permiso celebración evento |  | 2d | 2009-06-02 10:00 | 2009-06-04 10:00 | 124 | 7d | 0d |
| 126 | 9.2.3 | Firma contrato uso recinto | milestone | 0d | 2009-06-04 10:00 | 2009-06-04 10:00 | 125 | 7d | 0d |
| 127 | 9.2.4 | Cita previa proveedor carpa |  | 1h | 2009-06-04 10:00 | 2009-06-04 11:00 | 126 | 7d | 0d |
| 128 | 9.2.5 | Selección carpa |  | 1h | 2009-06-04 11:00 | 2009-06-04 12:00 | 127 | 7d | 0d |
| 129 | 9.2.6 | Firma contrato proveedor carpa | milestone | 0d | 2009-06-04 12:00 | 2009-06-04 12:00 | 128 | 7d | 0d |
| 130 | 9.2.7 | Instalación carpa |  | 5h | 2009-06-04 12:00 | 2009-06-04 19:00 | 129 | 7d | 0d |
| 131 | 9.2.8 | Celebración evento |  | 8h | 2009-06-05 09:00 | 2009-06-05 19:00 | 130 | 7d | 0d |
| 132 | 9.2.9 | Retirada carpa |  | 5h | 2009-06-08 09:00 | 2009-06-08 16:00 | 131 | 7d | 0d |
| 133 | 9.2.10 | Cierre contrato ayuntamiento | milestone | 0d | 2009-06-08 16:00 | 2009-06-08 16:00 | 132 | 7d | 0d |
| 134 | 9.2.11 | Cierre contrato proveedor carpa | milestone | 0d | 2009-06-08 16:00 | 2009-06-08 16:00 | 133 | 7d |  |
| 135 | 10 | **Noche de bodas** |  | 1.38d? | 2009-06-02 09:00 | 2009-06-03 12:00 |  | 10.25d |  |
| 136 | 10.1 | Selección destino noche bodas |  | 1h | 2009-06-02 09:00 | 2009-06-02 10:00 |  | 10.25d | 0d |
| 137 | 10.2 | Selección hotel |  | 1h | 2009-06-02 10:00 | 2009-06-02 11:00 | 136 | 10.25d | 0d |
| 138 | 10.3 | Reserva hotel |  | 1h | 2009-06-02 11:00 | 2009-06-02 12:00 | 137 | 10.25d | 0d |
| 139 | 10.4 | Firma contrato hotel | milestone | 0d | 2009-06-02 12:00 | 2009-06-02 12:00 | 138 | 10.25d | 0d |
| 140 | 10.5 | Noche de bodas hotel |  | 1d? | 2009-06-02 12:00 | 2009-06-03 12:00 | 139 | 10.25d | 0d |
| 141 | 10.6 | Cierre contrato hotel | milestone | 0d | 2009-06-03 12:00 | 2009-06-03 12:00 | 140 | 10.25d |  |
| 142 | 11 | **Organización banquete** |  | 1d? | 2009-06-02 09:00 | 2009-06-02 19:00 |  | 10.62d |  |
| 143 | 11.1 | Concerta cita previa restaurador |  | 1d? | 2009-06-02 09:00 | 2009-06-02 19:00 |  | 10.62d |  |
| 144 | 11.2 | Selección menú boda |  | 1d? | 2009-06-02 09:00 | 2009-06-02 19:00 |  | 10.62d |  |
| 145 | 11.3 | Prueba menú boda |  | 1d? | 2009-06-02 09:00 | 2009-06-02 19:00 |  | 10.62d |  |
| 146 | 11.4 | Firma contrato restaurante | milestone | 0d | 2009-06-02 09:00 | 2009-06-02 09:00 |  | 11.62d |  |
| 147 | 11.5 | Selección servicio catering |  | 1d? | 2009-06-02 09:00 | 2009-06-02 19:00 |  | 10.62d |  |
| 148 | 11.6 | Firma contrato catering | milestone | 0d | 2009-06-02 09:00 | 2009-06-02 09:00 |  | 11.62d |  |
| 149 | 11.7 | Servicio restaurante boda |  | 1d? | 2009-06-02 09:00 | 2009-06-02 19:00 |  | 10.62d |  |
| 150 | 11.8 | Servicio catering boda |  | 1d? | 2009-06-02 09:00 | 2009-06-02 19:00 |  | 10.62d |  |
| 151 | 11.9 | Cierre contrato restaurante | milestone | 0d | 2009-06-02 09:00 | 2009-06-02 09:00 |  | 11.62d |  |
| 152 | 11.10 | Cierre contrato catering | milestone | 0d | 2009-06-02 09:00 | 2009-06-02 09:00 |  | 11.62d |  |
